# Vivienda Unifamiliar - 2 plantas

Schedule from GanttProject, 2026-09-18 to 2027-03-30, baseline: Línea base - plan original.
Vivienda unifamiliar de dos plantas, aprox. 160 m2 cubiertos (PB 85 m2 + PA 75 m2). Fundación de zapatas y cimiento de PBC, estructura de HºAº con losa de entrepiso, mampostería de ladrillo común, techo de tejas sobre estructura de madera. Cómputos y rendimientos de referencia: reemplazarlos por los del proyecto.

## Calendars

- Project calendar: Mon-Sat working; Sun off. Exceptions (off unless hours are given): 2026-09-29 (Victoria de Boquerón), 2026-12-08 (Virgen de Caacupé), 2026-12-24 (Receso de fin de año), 2026-12-25 (Navidad), 2026-12-26 (Receso de fin de año), 2026-12-28 to 2026-12-31 (Receso de fin de año), 2027-01-01 (Año Nuevo), 2027-01-02 (Receso de fin de año), 2027-03-01 (Día de los Héroes), 2027-03-25 (Jueves Santo), 2027-03-26 (Viernes Santo).

## Resources

| Resource | Group | Rate |
| --- | --- | --- |
| Director de obra (Arq./Ing.) 1 | Dirección técnica | 600000 |
| Director de obra (Arq./Ing.) 2 | Dirección técnica | 600000 |
| Encargado de obra 1 | Dirección técnica | 300000 |
| Sereno 1 | Servicios de obra | 120000 |
| Topógrafo 1 | Servicios de obra | 500000 |
| Oficial albañil 1 | Albañilería | 200000 |
| Oficial albañil 2 | Albañilería | 200000 |
| Oficial albañil 3 | Albañilería | 200000 |
| Oficial albañil 4 | Albañilería | 200000 |
| Ayudante 1 | Albañilería | 130000 |
| Ayudante 2 | Albañilería | 130000 |
| Ayudante 3 | Albañilería | 130000 |
| Ayudante 4 | Albañilería | 130000 |
| Ayudante 5 | Albañilería | 130000 |
| Ayudante 6 | Albañilería | 130000 |
| Ayudante 7 | Albañilería | 130000 |
| Ayudante 8 | Albañilería | 130000 |
| Armador 1 | Hormigón armado | 210000 |
| Armador 2 | Hormigón armado | 210000 |
| Carpintero encofrador 1 | Hormigón armado | 210000 |
| Carpintero encofrador 2 | Hormigón armado | 210000 |
| Techista 1 | Techos | 210000 |
| Techista 2 | Techos | 210000 |
| Plomero sanitarista 1 | Instalaciones | 230000 |
| Electricista 1 | Instalaciones | 230000 |
| Electricista 2 | Instalaciones | 230000 |
| Colocador de pisos y revestimientos 1 | Terminaciones | 220000 |
| Colocador de pisos y revestimientos 2 | Terminaciones | 220000 |
| Colocador de pisos y revestimientos 3 | Terminaciones | 220000 |
| Colocador de pisos y revestimientos 4 | Terminaciones | 220000 |
| Yesero / cielorrasista 1 | Terminaciones | 210000 |
| Pintor 1 | Terminaciones | 190000 |
| Pintor 2 | Terminaciones | 190000 |
| Pintor 3 | Terminaciones | 190000 |
| Pintor 4 | Terminaciones | 190000 |
| Herrero / aberturista 1 | Carpintería y herrería | 230000 |
| Herrero / aberturista 2 | Carpintería y herrería | 230000 |
| Carpintero ebanista 1 | Carpintería y herrería | 230000 |
| Retroexcavadora (con operador) 1 | Equipos | 1200000 |
| Camión volcador (con chofer) 1 | Equipos | 700000 |
| Hormigonera 350 L 1 | Equipos | 80000 |
| Vibrador de inmersión 1 | Equipos | 60000 |
| Compactadora (pisón) 1 | Equipos | 90000 |

## Schedule

| ID | WBS | Task | Type | Duration | Start | Finish | Predecessors | Baseline start | Baseline finish | Baseline duration | Resources | Cost | Costo MO | Costo total | Holgura | Cómputo | Rendimiento | Cuadrilla |
| --- | --- | --- | --- | --- | --- | --- | --- | --- | --- | --- | --- | --- | --- | --- | --- | --- | --- | --- |
| 1 | 1 | **Vivienda Unifamiliar - 2 plantas** |  | 151d | 2026-09-18 | 2027-03-29 |  | 2026-09-18 | 2027-03-29 | 151d |  |  |  |  |  |  |  |  |
| 2 | 1.1 | **1 Trabajos preliminares** |  | 7d | 2026-09-18 | 2026-09-25 |  | 2026-09-18 | 2026-09-25 | 7d |  |  | 8.930.000 | 8.930.000 |  |  |  |  |
| 3 | 1.1.1 | 1.1 Acta de inicio de obra | milestone | 0d | 2026-09-18 | 2026-09-18 |  | 2026-09-18 | 2026-09-18 | 0d |  |  |  |  | 0 ● |  |  |  |
| 4 | 1.1.2 | 1.2 Limpieza y nivelación del terreno |  | 3d | 2026-09-18 | 2026-09-21 | 3 | 2026-09-18 | 2026-09-21 | 3d | Ayudante 2; Ayudante 3; Ayudante 4 | 1,170,000 | 1.170.000 | 1.170.000 | 0 ● | 300 m2 | 100 m2/día x 1 | 3 AY |
| 5 | 1.1.3 | 1.3 Obrador, depósito y sanitario provisorio |  | 4d | 2026-09-19 | 2026-09-23 | 4SS+1d | 2026-09-19 | 2026-09-23 | 4d | Carpintero encofrador 1; Ayudante 5; Ayudante 6 | 1,880,000 | 1.880.000 | 1.880.000 | 0 ● |  |  | 1 CARP + 2 AY |
| 6 | 1.1.4 | 1.4 Cerco de obra y portón provisorio |  | 3d | 2026-09-19 | 2026-09-22 | 4SS+1d | 2026-09-19 | 2026-09-22 | 3d | Oficial albañil 1; Ayudante 7 | 990,000 | 990.000 | 990.000 | 3 | 60 ml | 20 ml/día x 1 | 1 OF + 1 AY |
| 7 | 1.1.5 | 1.5 Conexiones provisorias de agua y energía |  | 2d | 2026-09-21 | 2026-09-22 | 5SS+1d | 2026-09-21 | 2026-09-22 | 2d | Plomero sanitarista 1; Electricista 1 | 920,000 | 920.000 | 920.000 | 3 |  |  | 1 PLOM + 1 ELEC |
| 8 | 1.1.6 | 1.6 Cartel de obra |  | 1d | 2026-09-24 | 2026-09-24 | 5 | 2026-09-24 | 2026-09-24 | 1d | Ayudante 2 | 130,000 | 130.000 | 130.000 | 1 |  |  | 1 AY |
| 9 | 1.1.7 | 1.7 Replanteo planialtimétrico y caballetes |  | 2d | 2026-09-22 | 2026-09-23 | 4 | 2026-09-22 | 2026-09-23 | 2d | Topógrafo 1; Oficial albañil 2; Ayudante 2; Ayudante 3 | 1,920,000 | 1.920.000 | 1.920.000 | 2 |  |  | 1 TOP + 1 OF + 2 AY |
| 10 | 1.1.8 | 1.8 Acopio inicial de materiales |  | 2d | 2026-09-24 | 2026-09-25 | 5 | 2026-09-24 | 2026-09-25 | 2d | Ayudante 3; Ayudante 4; Camión volcador (con chofer) 1 | 1,920,000 | 1.920.000 | 1.920.000 | 0 ● |  |  | 2 AY + 1 CAM |
| 11 | 1.1.9 | 1.9 Obrador y servicios provisorios habilitados | milestone | 0d | 2026-09-26 | 2026-09-26 | 5, 6, 7, 8, 10 | 2026-09-26 | 2026-09-26 | 0d |  |  |  |  | 0 ● |  |  |  |
| 12 | 1.2 | **2 Movimiento de suelos** |  | 5d | 2026-09-26 | 2026-10-02 |  | 2026-09-26 | 2026-10-02 | 5d |  |  | 8.470.000 | 8.470.000 |  |  |  |  |
| 13 | 1.2.1 | 2.1 Excavación de zanjas para cimientos |  | 3d | 2026-09-26 | 2026-09-30 | 9, 11 | 2026-09-26 | 2026-09-30 | 3d | Retroexcavadora (con operador) 1; Ayudante 2; Ayudante 3 | 4,380,000 | 4.380.000 | 4.380.000 | 0 ● | 38 m3 | 15 m3/día x 1 | 1 RETRO + 2 AY |
| 14 | 1.2.2 | 2.2 Excavación manual de pozos para zapatas |  | 4d | 2026-09-26 | 2026-10-01 | 9, 11 | 2026-09-26 | 2026-10-01 | 4d | Ayudante 4; Ayudante 5; Ayudante 6; Ayudante 7 | 2,080,000 | 2.080.000 | 2.080.000 | 0 ● | 18 m3 | 2.5 m3/día x 2 | 4 AY |
| 15 | 1.2.3 | 2.3 Retiro de tierra sobrante |  | 2d | 2026-10-01 | 2026-10-02 | 13, 14SS+2d | 2026-10-01 | 2026-10-02 | 2d | Camión volcador (con chofer) 1; Ayudante 2 | 1,660,000 | 1.660.000 | 1.660.000 | 0 ● | 40 m3 | 30 m3/día x 1 | 1 CAM + 1 AY |
| 16 | 1.2.4 | 2.4 Perfilado y compactación de fondo de excavación |  | 1d | 2026-10-02 | 2026-10-02 | 13, 14 | 2026-10-02 | 2026-10-02 | 1d | Ayudante 3; Ayudante 4; Compactadora (pisón) 1 | 350,000 | 350.000 | 350.000 | 0 ● |  |  | 2 AY + 1 COMP |
| 17 | 1.2.5 | 2.5 Control: inspección de excavaciones y suelo de fundación | milestone | 0d | 2026-10-03 | 2026-10-03 | 16 | 2026-10-03 | 2026-10-03 | 0d |  |  |  |  | 0 ● |  |  |  |
| 18 | 1.3 | **3 Fundaciones** |  | 28d | 2026-10-03 | 2026-11-04 |  | 2026-10-03 | 2026-11-04 | 28d |  |  | 19.350.000 | 19.350.000 |  |  |  |  |
| 19 | 1.3.1 | 3.1 Hormigón de limpieza |  | 1d | 2026-10-03 | 2026-10-03 | 15, 17 | 2026-10-03 | 2026-10-03 | 1d | Oficial albañil 1; Ayudante 2; Ayudante 3; Ayudante 4; Hormigonera 350 L 1 | 670,000 | 670.000 | 670.000 | 0 ● | 3 m3 | 3 m3/día x 1 | 1 OF + 3 AY + 1 HORM |
| 20 | 1.3.2 | 3.2 Armadura de zapatas y arranques de pilares |  | 3d | 2026-10-05 | 2026-10-07 | 19 | 2026-10-05 | 2026-10-07 | 3d | Armador 1; Armador 2; Ayudante 2; Ayudante 3 | 2,040,000 | 2.040.000 | 2.040.000 | 0 ● | 900 kg | 180 kg/día x 2 | 2 ARM + 2 AY |
| 21 | 1.3.3 | 3.3 Control: inspección de armaduras de zapatas | milestone | 0d | 2026-10-08 | 2026-10-08 | 20 | 2026-10-08 | 2026-10-08 | 0d |  |  |  |  | 0 ● |  |  |  |
| 22 | 1.3.4 | 3.4 Hormigonado de zapatas (con toma de probetas) |  | 2d | 2026-10-08 | 2026-10-09 | 21 | 2026-10-08 | 2026-10-09 | 2d | Oficial albañil 1; Ayudante 2; Ayudante 3; Ayudante 4; Ayudante 7; Ayudante 8; Hormigonera 350 L 1; Vibrador de inmersión 1 | 1,980,000 | 1.980.000 | 1.980.000 | 0 ● | 9 m3 | 6 m3/día x 1 | 1 OF + 5 AY + 1 HORM + 1 VIB |
| 23 | 1.3.5 | 3.5 Cimiento de piedra bruta colocada (PBC) |  | 4d | 2026-10-13 | 2026-10-16 | 22FS+2d | 2026-10-13 | 2026-10-16 | 4d | Oficial albañil 1; Oficial albañil 2; Ayudante 2; Ayudante 3; Ayudante 4; Ayudante 5 | 3,680,000 | 3.680.000 | 3.680.000 | 0 ● | 22 m3 | 3 m3/día x 2 | 2 OF + 4 AY |
| 24 | 1.3.6 | 3.6 Viga de fundación / encadenado inferior de HºAº |  | 6d | 2026-10-16 | 2026-10-22 | 23SS+3d, 23FF+1d | 2026-10-16 | 2026-10-22 | 6d | Armador 1; Armador 2; Carpintero encofrador 1; Carpintero encofrador 2; Ayudante 6; Ayudante 7; Hormigonera 350 L 1 | 7,080,000 | 7.080.000 | 7.080.000 | 0 ● | 4.5 m3 | 0.75 m3/día x 1 | 2 ARM + 2 CARP + 2 AY + 1 HORM |
| 25 | 1.3.7 | 3.7 Mampostería de nivelación (sobrecimiento) |  | 2d | 2026-10-26 | 2026-10-27 | 24FS+2d | 2026-10-26 | 2026-10-27 | 2d | Oficial albañil 1; Oficial albañil 2; Ayudante 2; Ayudante 3 | 1,320,000 | 1.320.000 | 1.320.000 | 0 ● | 18 m2 | 6 m2/día x 2 | 2 OF + 2 AY |
| 26 | 1.3.8 | 3.8 Aislación hidrófuga horizontal (doble capa aisladora) |  | 2d | 2026-10-28 | 2026-10-29 | 25 | 2026-10-28 | 2026-10-29 | 2d | Oficial albañil 1; Ayudante 2 | 660,000 | 660.000 | 660.000 | 2 | 65 ml | 35 ml/día x 1 | 1 OF + 1 AY |
| 27 | 1.3.9 | 3.9 Relleno y compactación interior por capas |  | 4d | 2026-10-31 | 2026-11-04 | 26, 60SS+1d | 2026-10-31 | 2026-11-04 | 4d | Ayudante 3; Ayudante 4; Ayudante 5; Compactadora (pisón) 1 | 1,920,000 | 1.920.000 | 1.920.000 | 67 | 40 m3 | 10 m3/día x 1 | 3 AY + 1 COMP |
| 28 | 1.3.10 | 3.10 Fundaciones terminadas | milestone | 0d | 2026-10-30 | 2026-10-30 | 26 | 2026-10-30 | 2026-10-30 | 0d |  |  |  |  | 102 |  |  |  |

Notes:
- 3: Holgura total: 0 / Holgura libre: 0 / TAREA CRÍTICA
- 4: Cómputo: 300 m2 / Rendimiento: 100 m2/día por cuadrilla / Cuadrillas: 1 / Duración: 3 días hábiles / Recursos: Ayudante x3 / Costo MO: 1.170.000 / Materiales: 0 / Total: 1.170.000 / Predecesoras: 1.1 FS / Holgura total: 0 / Holgura libre: 0 / TAREA CRÍTICA
- 5: Recursos: Carpintero encofrador x1, Ayudante x2 / Costo MO: 1.880.000 / Materiales: 0 / Total: 1.880.000 / Predecesoras: 1.2 SS+1 / Holgura total: 0 / Holgura libre: 0 / TAREA CRÍTICA
- 6: Cómputo: 60 ml / Rendimiento: 20 ml/día por cuadrilla / Cuadrillas: 1 / Duración: 3 días hábiles / Recursos: Oficial albañil x1, Ayudante x1 / Costo MO: 990.000 / Materiales: 0 / Total: 990.000 / Predecesoras: 1.2 SS+1 / Holgura total: 3 / Holgura libre: 3
- 7: Recursos: Plomero sanitarista x1, Electricista x1 / Costo MO: 920.000 / Materiales: 0 / Total: 920.000 / Predecesoras: 1.3 SS+1 / Holgura total: 3 / Holgura libre: 3
- 8: Recursos: Ayudante x1 / Costo MO: 130.000 / Materiales: 0 / Total: 130.000 / Predecesoras: 1.3 FS / Holgura total: 1 / Holgura libre: 1
- 9: Recursos: Topógrafo x1, Oficial albañil x1, Ayudante x2 / Costo MO: 1.920.000 / Materiales: 0 / Total: 1.920.000 / Predecesoras: 1.2 FS / Holgura total: 2 / Holgura libre: 2
- 10: Recursos: Ayudante x2, Camión volcador (con chofer) x1 / Costo MO: 1.920.000 / Materiales: 0 / Total: 1.920.000 / Predecesoras: 1.3 FS / Holgura total: 0 / Holgura libre: 0 / TAREA CRÍTICA
- 11: Predecesoras: 1.3 FS, 1.4 FS, 1.5 FS, 1.6 FS, 1.8 FS / Holgura total: 0 / Holgura libre: 0 / TAREA CRÍTICA
- 13: Cómputo: 38 m3 / Rendimiento: 15 m3/día por cuadrilla / Cuadrillas: 1 / Duración: 3 días hábiles / Recursos: Retroexcavadora (con operador) x1, Ayudante x2 / Costo MO: 4.380.000 / Materiales: 0 / Total: 4.380.000 / Predecesoras: 1.7 FS, 1.9 FS / Holgura total: 0 / Holgura libre: 0 / TAREA CRÍTICA
- 14: Cómputo: 18 m3 / Rendimiento: 2.5 m3/día por cuadrilla / Cuadrillas: 2 / Duración: 4 días hábiles / Recursos: Ayudante x4 / Costo MO: 2.080.000 / Materiales: 0 / Total: 2.080.000 / Predecesoras: 1.7 FS, 1.9 FS / Holgura total: 0 / Holgura libre: 0 / TAREA CRÍTICA
- 15: Cómputo: 40 m3 / Rendimiento: 30 m3/día por cuadrilla / Cuadrillas: 1 / Duración: 2 días hábiles / Recursos: Camión volcador (con chofer) x1, Ayudante x1 / Costo MO: 1.660.000 / Materiales: 0 / Total: 1.660.000 / Predecesoras: 2.1 FS, 2.2 SS+2 / Holgura total: 0 / Holgura libre: 0 / TAREA CRÍTICA
- 16: Recursos: Ayudante x2, Compactadora (pisón) x1 / Costo MO: 350.000 / Materiales: 0 / Total: 350.000 / Predecesoras: 2.1 FS, 2.2 FS / Holgura total: 0 / Holgura libre: 0 / TAREA CRÍTICA
- 17: Predecesoras: 2.4 FS / Holgura total: 0 / Holgura libre: 0 / TAREA CRÍTICA
- 19: Cómputo: 3 m3 / Rendimiento: 3 m3/día por cuadrilla / Cuadrillas: 1 / Duración: 1 días hábiles / Recursos: Oficial albañil x1, Ayudante x3, Hormigonera 350 L x1 / Costo MO: 670.000 / Materiales: 0 / Total: 670.000 / Predecesoras: 2.5 FS, 2.3 FS / Holgura total: 0 / Holgura libre: 0 / TAREA CRÍTICA
- 20: Cómputo: 900 kg / Rendimiento: 180 kg/día por cuadrilla / Cuadrillas: 2 / Duración: 3 días hábiles / Recursos: Armador x2, Ayudante x2 / Costo MO: 2.040.000 / Materiales: 0 / Total: 2.040.000 / Predecesoras: 3.1 FS / Holgura total: 0 / Holgura libre: 0 / TAREA CRÍTICA
- 21: Predecesoras: 3.2 FS / Holgura total: 0 / Holgura libre: 0 / TAREA CRÍTICA
- 22: Cómputo: 9 m3 / Rendimiento: 6 m3/día por cuadrilla / Cuadrillas: 1 / Duración: 2 días hábiles / Recursos: Oficial albañil x1, Ayudante x5, Hormigonera 350 L x1, Vibrador de inmersión x1 / Costo MO: 1.980.000 / Materiales: 0 / Total: 1.980.000 / Predecesoras: 3.3 FS / Holgura total: 0 / Holgura libre: 0 / TAREA CRÍTICA
- 23: Cómputo: 22 m3 / Rendimiento: 3 m3/día por cuadrilla / Cuadrillas: 2 / Duración: 4 días hábiles / Recursos: Oficial albañil x2, Ayudante x4 / Costo MO: 3.680.000 / Materiales: 0 / Total: 3.680.000 / Predecesoras: 3.4 FS+2 / Holgura total: 0 / Holgura libre: 0 / TAREA CRÍTICA
- 24: Cómputo: 4.5 m3 / Rendimiento: 0.75 m3/día por cuadrilla / Cuadrillas: 1 / Duración: 6 días hábiles / Recursos: Armador x2, Carpintero encofrador x2, Ayudante x2, Hormigonera 350 L x1 / Costo MO: 7.080.000 / Materiales: 0 / Total: 7.080.000 / Predecesoras: 3.5 SS+3, 3.5 FF+1 / Holgura total: 0 / Holgura libre: 0 / TAREA CRÍTICA
- 25: Cómputo: 18 m2 / Rendimiento: 6 m2/día por cuadrilla / Cuadrillas: 2 / Duración: 2 días hábiles / Recursos: Oficial albañil x2, Ayudante x2 / Costo MO: 1.320.000 / Materiales: 0 / Total: 1.320.000 / Predecesoras: 3.6 FS+2 / Holgura total: 0 / Holgura libre: 0 / TAREA CRÍTICA
- 26: Cómputo: 65 ml / Rendimiento: 35 ml/día por cuadrilla / Cuadrillas: 1 / Duración: 2 días hábiles / Recursos: Oficial albañil x1, Ayudante x1 / Costo MO: 660.000 / Materiales: 0 / Total: 660.000 / Predecesoras: 3.7 FS / Holgura total: 2 / Holgura libre: 0
- 27: Cómputo: 40 m3 / Rendimiento: 10 m3/día por cuadrilla / Cuadrillas: 1 / Duración: 4 días hábiles / Recursos: Ayudante x3, Compactadora (pisón) x1 / Costo MO: 1.920.000 / Materiales: 0 / Total: 1.920.000 / Predecesoras: 3.8 FS, 7.1 SS+1 / Holgura total: 67 / Holgura libre: 55
- 28: Predecesoras: 3.8 FS / Holgura total: 102 / Holgura libre: 20

| ID | WBS | Task | Type | Duration | Start | Finish | Predecessors | Baseline start | Baseline finish | Baseline duration | Constraint | Resources | Cost | Costo MO | Costo total | Cómputo | Rendimiento | Cuadrilla | Holgura |
| --- | --- | --- | --- | --- | --- | --- | --- | --- | --- | --- | --- | --- | --- | --- | --- | --- | --- | --- | --- |
| 29 | 1.4 | **4 Estructura de hormigón armado** |  | 54d | 2026-10-23 | 2027-01-05 |  | 2026-10-23 | 2027-01-05 | 54d |  |  |  | 29.585.000 | 29.585.000 |  |  |  |  |
| 30 | 1.4.1 | 4.1 Pilares PB: armadura |  | 2d | 2026-10-23 | 2026-10-24 | 24 | 2026-10-23 | 2026-10-24 | 2d |  | Armador 1; Armador 2; Ayudante 2 | 1,100,000 | 1.100.000 | 1.100.000 | 600 kg | 180 kg/día x 2 | 2 ARM + 1 AY | 0 ● |
| 31 | 1.4.2 | 4.2 Pilares PB: encofrado y hormigonado |  | 4d | 2026-10-26 | 2026-10-29 | 25SS, 30 | 2026-10-26 | 2026-10-29 | 4d |  | Carpintero encofrador 1; Carpintero encofrador 2; Oficial albañil 3; Ayudante 4; Ayudante 5; Hormigonera 350 L 1; Vibrador de inmersión 1 | 4,080,000 | 4.080.000 | 4.080.000 | 3 m3 | 0.8 m3/día x 1 | 2 CARP + 1 OF + 2 AY + 1 HORM + 1 VIB | 0 ● |
| 32 | 1.4.3 | 4.3 Encofrado de vigas y losa de entrepiso (con apuntalamiento) |  | 4d | 2026-11-13 | 2026-11-17 | 31FS+3d, 44, 45, 46 | 2026-11-13 | 2026-11-17 | 4d |  | Carpintero encofrador 1; Carpintero encofrador 2; Ayudante 2; Ayudante 3 | 2,720,000 | 2.720.000 | 2.720.000 | 85 m2 | 12 m2/día x 2 | 2 CARP + 2 AY | 0 ● |
| 33 | 1.4.4 | 4.4 Armadura de vigas y losa de entrepiso |  | 5d | 2026-11-16 | 2026-11-20 | 32SS+2d | 2026-11-16 | 2026-11-20 | 5d |  | Armador 1; Armador 2; Ayudante 6; Ayudante 7 | 3,400,000 | 3.400.000 | 3.400.000 | 2100 kg | 220 kg/día x 2 | 2 ARM + 2 AY | 0 ● |
| 34 | 1.4.5 | 4.5 Control: inspección de encofrados, armaduras y cañerías en losa | milestone | 0d | 2026-11-21 | 2026-11-21 | 33, 70 | 2026-11-21 | 2026-11-21 | 0d |  |  |  |  |  |  |  |  | 0 ● |
| 35 | 1.4.6 | 4.6 Hormigonado de losa de entrepiso (HºAº elaborado + bomba) |  | 1d | 2026-11-21 | 2026-11-21 | 34 | 2026-11-21 | 2026-11-21 | 1d |  | Oficial albañil 1; Oficial albañil 2; Ayudante 2; Ayudante 3; Ayudante 4; Ayudante 5; Ayudante 6; Ayudante 7; Vibrador de inmersión 1 | 1,240,000 | 1.240.000 | 1.240.000 | 11 m3 | 15 m3/día x 1 | 2 OF + 6 AY + 1 VIB | 0 ● |
| 36 | 1.4.7 | 4.7 Curado de losa de entrepiso (riego 7 días) |  | 7d | 2026-11-23 | 2026-11-30 | 35 | 2026-11-23 | 2026-11-30 | 7d |  | Ayudante 1 [50%] | 455,000 | 455.000 | 455.000 |  |  | 0.5 AY | 20 |
| 37 | 1.4.8 | 4.8 Pilares PA: armadura |  | 2d | 2026-11-26 | 2026-11-27 | 35FS+3d | 2026-11-26 | 2026-11-27 | 2d |  | Armador 1; Armador 2; Ayudante 4 | 1,100,000 | 1.100.000 | 1.100.000 | 450 kg | 180 kg/día x 2 | 2 ARM + 1 AY | 0 ● |
| 38 | 1.4.9 | 4.9 Pilares PA: encofrado y hormigonado |  | 4d | 2026-11-28 | 2026-12-02 | 37 | 2026-11-28 | 2026-12-02 | 4d |  | Carpintero encofrador 1; Carpintero encofrador 2; Oficial albañil 1; Ayudante 2; Ayudante 3; Hormigonera 350 L 1; Vibrador de inmersión 1 | 4,080,000 | 4.080.000 | 4.080.000 | 2.5 m3 | 0.8 m3/día x 1 | 2 CARP + 1 OF + 2 AY + 1 HORM + 1 VIB | 0 ● |
| 39 | 1.4.10 | 4.10 Escalera de HºAº |  | 5d | 2026-12-03 | 2026-12-09 | 35FS+5d | 2026-12-03 | 2026-12-09 | 5d | start no earlier than 2026-12-03 | Armador 1; Carpintero encofrador 1; Ayudante 2; Ayudante 3; Hormigonera 350 L 1 | 3,800,000 | 3.800.000 | 3.800.000 | 2 m3 | 0.4 m3/día x 1 | 1 ARM + 1 CARP + 2 AY + 1 HORM | 16 |
| 40 | 1.4.11 | 4.11 Desencofrado de losa de entrepiso |  | 3d | 2026-12-23 | 2027-01-05 | 35FS+18d, 36 | 2026-12-23 | 2027-01-05 | 3d | start no earlier than 2026-12-23 | Carpintero encofrador 1; Ayudante 2; Ayudante 3 | 1,410,000 | 1.410.000 | 1.410.000 |  |  | 1 CARP + 2 AY | 2 |
| 41 | 1.4.12 | 4.12 Encadenado superior PA (viga de techo) |  | 5d | 2026-12-17 | 2026-12-22 | 47, 48, 49 | 2026-12-17 | 2026-12-22 | 5d |  | Armador 1; Armador 2; Carpintero encofrador 1; Carpintero encofrador 2; Ayudante 2; Ayudante 3; Hormigonera 350 L 1; Vibrador de inmersión 1 | 6,200,000 | 6.200.000 | 6.200.000 | 3.5 m3 | 0.7 m3/día x 1 | 2 ARM + 2 CARP + 2 AY + 1 HORM + 1 VIB | 0 ● |
| 42 | 1.4.13 | 4.13 Estructura de HºAº terminada | milestone | 0d | 2027-01-06 | 2027-01-06 | 39, 40, 41 | 2027-01-06 | 2027-01-06 | 0d |  |  |  |  |  |  |  |  | 2 |
| 43 | 1.5 | **5 Mampostería** |  | 48d | 2026-11-02 | 2027-01-07 |  | 2026-11-02 | 2027-01-07 | 48d |  |  |  | 23.810.000 | 23.810.000 |  |  |  |  |
| 44 | 1.5.1 | 5.1 Mampostería de elevación PB (ladrillo común) |  | 10d | 2026-11-02 | 2026-11-12 | 26, 31FS+2d | 2026-11-02 | 2026-11-12 | 10d |  | Oficial albañil 1; Oficial albañil 2; Oficial albañil 3; Ayudante 6; Ayudante 7; Ayudante 8 | 9,900,000 | 9.900.000 | 9.900.000 | 260 m2 | 9 m2/día x 3 | 3 OF + 3 AY | 0 ● |
| 45 | 1.5.2 | 5.2 Colocación de marcos de aberturas PB |  | 3d | 2026-11-05 | 2026-11-07 | 44SS+3d | 2026-11-05 | 2026-11-07 | 3d |  | Oficial albañil 4; Ayudante 2 | 990,000 | 990.000 | 990.000 | 14 un | 5 un/día x 1 | 1 OF + 1 AY | 4 |
| 46 | 1.5.3 | 5.3 Dinteles y encadenados intermedios PB |  | 3d | 2026-11-07 | 2026-11-10 | 44SS+5d | 2026-11-07 | 2026-11-10 | 3d |  | Armador 1; Ayudante 3 | 1,020,000 | 1.020.000 | 1.020.000 |  |  | 1 ARM + 1 AY | 2 |
| 47 | 1.5.4 | 5.4 Mampostería de elevación PA (ladrillo común) |  | 9d | 2026-12-05 | 2026-12-16 | 38FS+2d | 2026-12-05 | 2026-12-16 | 9d |  | Oficial albañil 1; Oficial albañil 2; Oficial albañil 3; Ayudante 4; Ayudante 5; Ayudante 6 | 8,910,000 | 8.910.000 | 8.910.000 | 220 m2 | 9 m2/día x 3 | 3 OF + 3 AY | 0 ● |
| 48 | 1.5.5 | 5.5 Colocación de marcos de aberturas PA |  | 3d | 2026-12-10 | 2026-12-12 | 47SS+3d | 2026-12-10 | 2026-12-12 | 3d |  | Oficial albañil 4; Ayudante 2 | 990,000 | 990.000 | 990.000 | 12 un | 5 un/día x 1 | 1 OF + 1 AY | 3 |
| 49 | 1.5.6 | 5.6 Dinteles PA |  | 2d | 2026-12-11 | 2026-12-12 | 47SS+4d | 2026-12-11 | 2026-12-12 | 2d |  | Armador 1; Ayudante 3 | 680,000 | 680.000 | 680.000 |  |  | 1 ARM + 1 AY | 3 |
| 50 | 1.5.7 | 5.7 Mampostería de tímpanos y cargas de techo |  | 2d | 2027-01-06 | 2027-01-07 | 41FS+3d | 2027-01-06 | 2027-01-07 | 2d |  | Oficial albañil 2; Oficial albañil 3; Ayudante 2; Ayudante 3 | 1,320,000 | 1.320.000 | 1.320.000 | 25 m2 | 8 m2/día x 2 | 2 OF + 2 AY | 0 ● |
| 51 | 1.6 | **6 Techo y cubierta** |  | 15d | 2027-01-08 | 2027-01-25 |  | 2027-01-08 | 2027-01-25 | 15d |  |  |  | 9.920.000 | 9.920.000 |  |  |  |  |
| 52 | 1.6.1 | 6.1 Estructura de madera (vigas y tirantes) |  | 4d | 2027-01-08 | 2027-01-12 | 42, 50 | 2027-01-08 | 2027-01-12 | 4d |  | Techista 1; Techista 2; Ayudante 2; Ayudante 3 | 2,720,000 | 2.720.000 | 2.720.000 | 90 m2 | 12 m2/día x 2 | 2 TECH + 2 AY | 0 ● |
| 53 | 1.6.2 | 6.2 Entablonado / machimbre |  | 3d | 2027-01-13 | 2027-01-15 | 52 | 2027-01-13 | 2027-01-15 | 3d |  | Techista 1; Techista 2; Ayudante 2; Ayudante 3 | 2,040,000 | 2.040.000 | 2.040.000 | 90 m2 | 20 m2/día x 2 | 2 TECH + 2 AY | 0 ● |
| 54 | 1.6.3 | 6.3 Aislación térmica e hidrófuga (membrana) |  | 2d | 2027-01-16 | 2027-01-18 | 53 | 2027-01-16 | 2027-01-18 | 2d |  | Techista 1; Ayudante 2 | 680,000 | 680.000 | 680.000 | 90 m2 | 50 m2/día x 1 | 1 TECH + 1 AY | 0 ● |
| 55 | 1.6.4 | 6.4 Cubierta de tejas cerámicas |  | 4d | 2027-01-19 | 2027-01-22 | 54 | 2027-01-19 | 2027-01-22 | 4d |  | Techista 1; Techista 2; Ayudante 2; Ayudante 3 | 2,720,000 | 2.720.000 | 2.720.000 | 95 m2 | 15 m2/día x 2 | 2 TECH + 2 AY | 0 ● |
| 56 | 1.6.5 | 6.5 Cumbreras, limatesas y babetas |  | 2d | 2027-01-23 | 2027-01-25 | 55 | 2027-01-23 | 2027-01-25 | 2d |  | Techista 1; Ayudante 2 | 680,000 | 680.000 | 680.000 |  |  | 1 TECH + 1 AY | 0 ● |
| 57 | 1.6.6 | 6.6 Canaletas y bajadas pluviales |  | 3d | 2027-01-21 | 2027-01-23 | 55SS+2d | 2027-01-21 | 2027-01-23 | 3d |  | Herrero / aberturista 1; Ayudante 8 | 1,080,000 | 1.080.000 | 1.080.000 | 40 ml | 15 ml/día x 1 | 1 HERR + 1 AY | 1 |
| 58 | 1.6.7 | 6.7 Obra bajo techo | milestone | 0d | 2027-01-26 | 2027-01-26 | 56, 57 | 2027-01-26 | 2027-01-26 | 0d |  |  |  |  |  |  |  |  | 0 ● |

Notes:
- 30: Cómputo: 600 kg / Rendimiento: 180 kg/día por cuadrilla / Cuadrillas: 2 / Duración: 2 días hábiles / Recursos: Armador x2, Ayudante x1 / Costo MO: 1.100.000 / Materiales: 0 / Total: 1.100.000 / Predecesoras: 3.6 FS / Holgura total: 0 / Holgura libre: 0 / TAREA CRÍTICA
- 31: Cómputo: 3 m3 / Rendimiento: 0.8 m3/día por cuadrilla / Cuadrillas: 1 / Duración: 4 días hábiles / Recursos: Carpintero encofrador x2, Oficial albañil x1, Ayudante x2, Hormigonera 350 L x1, Vibrador de inmersión x1 / Costo MO: 4.080.000 / Materiales: 0 / Total: 4.080.000 / Predecesoras: 4.1 FS, 3.7 SS / Holgura total: 0 / Holgura libre: 0 / TAREA CRÍTICA
- 32: Cómputo: 85 m2 / Rendimiento: 12 m2/día por cuadrilla / Cuadrillas: 2 / Duración: 4 días hábiles / Recursos: Carpintero encofrador x2, Ayudante x2 / Costo MO: 2.720.000 / Materiales: 0 / Total: 2.720.000 / Predecesoras: 5.1 FS, 4.2 FS+3, 5.2 FS, 5.3 FS / Holgura total: 0 / Holgura libre: 0 / TAREA CRÍTICA
- 33: Cómputo: 2100 kg / Rendimiento: 220 kg/día por cuadrilla / Cuadrillas: 2 / Duración: 5 días hábiles / Recursos: Armador x2, Ayudante x2 / Costo MO: 3.400.000 / Materiales: 0 / Total: 3.400.000 / Predecesoras: 4.3 SS+2 / Holgura total: 0 / Holgura libre: 0 / TAREA CRÍTICA
- 34: Predecesoras: 4.4 FS, 8.1 FS / Holgura total: 0 / Holgura libre: 0 / TAREA CRÍTICA
- 35: Cómputo: 11 m3 / Rendimiento: 15 m3/día por cuadrilla / Cuadrillas: 1 / Duración: 1 días hábiles / Recursos: Oficial albañil x2, Ayudante x6, Vibrador de inmersión x1 / Costo MO: 1.240.000 / Materiales: 0 / Total: 1.240.000 / Predecesoras: 4.5 FS / Holgura total: 0 / Holgura libre: 0 / TAREA CRÍTICA
- 36: Recursos: Ayudante x0.5 / Costo MO: 455.000 / Materiales: 0 / Total: 455.000 / Predecesoras: 4.6 FS / Holgura total: 20 / Holgura libre: 18
- 37: Cómputo: 450 kg / Rendimiento: 180 kg/día por cuadrilla / Cuadrillas: 2 / Duración: 2 días hábiles / Recursos: Armador x2, Ayudante x1 / Costo MO: 1.100.000 / Materiales: 0 / Total: 1.100.000 / Predecesoras: 4.6 FS+3 / Holgura total: 0 / Holgura libre: 0 / TAREA CRÍTICA
- 38: Cómputo: 2.5 m3 / Rendimiento: 0.8 m3/día por cuadrilla / Cuadrillas: 1 / Duración: 4 días hábiles / Recursos: Carpintero encofrador x2, Oficial albañil x1, Ayudante x2, Hormigonera 350 L x1, Vibrador de inmersión x1 / Costo MO: 4.080.000 / Materiales: 0 / Total: 4.080.000 / Predecesoras: 4.8 FS / Holgura total: 0 / Holgura libre: 0 / TAREA CRÍTICA
- 39: Cómputo: 2 m3 / Rendimiento: 0.4 m3/día por cuadrilla / Cuadrillas: 1 / Duración: 5 días hábiles / Recursos: Armador x1, Carpintero encofrador x1, Ayudante x2, Hormigonera 350 L x1 / Costo MO: 3.800.000 / Materiales: 0 / Total: 3.800.000 / Predecesoras: 4.6 FS+5 / Holgura total: 16 / Holgura libre: 14 / Retrasada por nivelación de recursos (4 días hábiles respecto del CPM sin límites).
- 40: Recursos: Carpintero encofrador x1, Ayudante x2 / Costo MO: 1.410.000 / Materiales: 0 / Total: 1.410.000 / Predecesoras: 4.6 FS+18, 4.7 FS / Holgura total: 2 / Holgura libre: 0 / Retrasada por nivelación de recursos (7 días hábiles respecto del CPM sin límites).
- 41: Cómputo: 3.5 m3 / Rendimiento: 0.7 m3/día por cuadrilla / Cuadrillas: 1 / Duración: 5 días hábiles / Recursos: Armador x2, Carpintero encofrador x2, Ayudante x2, Hormigonera 350 L x1, Vibrador de inmersión x1 / Costo MO: 6.200.000 / Materiales: 0 / Total: 6.200.000 / Predecesoras: 5.4 FS, 5.5 FS, 5.6 FS / Holgura total: 0 / Holgura libre: 0 / TAREA CRÍTICA
- 42: Predecesoras: 4.10 FS, 4.11 FS, 4.12 FS / Holgura total: 2 / Holgura libre: 2
- 44: Cómputo: 260 m2 / Rendimiento: 9 m2/día por cuadrilla / Cuadrillas: 3 / Duración: 10 días hábiles / Recursos: Oficial albañil x3, Ayudante x3 / Costo MO: 9.900.000 / Materiales: 0 / Total: 9.900.000 / Predecesoras: 4.2 FS+2, 3.8 FS / Holgura total: 0 / Holgura libre: 0 / TAREA CRÍTICA
- 45: Cómputo: 14 un / Rendimiento: 5 un/día por cuadrilla / Cuadrillas: 1 / Duración: 3 días hábiles / Recursos: Oficial albañil x1, Ayudante x1 / Costo MO: 990.000 / Materiales: 0 / Total: 990.000 / Predecesoras: 5.1 SS+3 / Holgura total: 4 / Holgura libre: 4
- 46: Recursos: Armador x1, Ayudante x1 / Costo MO: 1.020.000 / Materiales: 0 / Total: 1.020.000 / Predecesoras: 5.1 SS+5 / Holgura total: 2 / Holgura libre: 2
- 47: Cómputo: 220 m2 / Rendimiento: 9 m2/día por cuadrilla / Cuadrillas: 3 / Duración: 9 días hábiles / Recursos: Oficial albañil x3, Ayudante x3 / Costo MO: 8.910.000 / Materiales: 0 / Total: 8.910.000 / Predecesoras: 4.9 FS+2 / Holgura total: 0 / Holgura libre: 0 / TAREA CRÍTICA
- 48: Cómputo: 12 un / Rendimiento: 5 un/día por cuadrilla / Cuadrillas: 1 / Duración: 3 días hábiles / Recursos: Oficial albañil x1, Ayudante x1 / Costo MO: 990.000 / Materiales: 0 / Total: 990.000 / Predecesoras: 5.4 SS+3 / Holgura total: 3 / Holgura libre: 3
- 49: Recursos: Armador x1, Ayudante x1 / Costo MO: 680.000 / Materiales: 0 / Total: 680.000 / Predecesoras: 5.4 SS+4 / Holgura total: 3 / Holgura libre: 3
- 50: Cómputo: 25 m2 / Rendimiento: 8 m2/día por cuadrilla / Cuadrillas: 2 / Duración: 2 días hábiles / Recursos: Oficial albañil x2, Ayudante x2 / Costo MO: 1.320.000 / Materiales: 0 / Total: 1.320.000 / Predecesoras: 4.12 FS+3 / Holgura total: 0 / Holgura libre: 0 / TAREA CRÍTICA
- 52: Cómputo: 90 m2 / Rendimiento: 12 m2/día por cuadrilla / Cuadrillas: 2 / Duración: 4 días hábiles / Recursos: Techista x2, Ayudante x2 / Costo MO: 2.720.000 / Materiales: 0 / Total: 2.720.000 / Predecesoras: 5.7 FS, 4.13 FS / Holgura total: 0 / Holgura libre: 0 / TAREA CRÍTICA
- 53: Cómputo: 90 m2 / Rendimiento: 20 m2/día por cuadrilla / Cuadrillas: 2 / Duración: 3 días hábiles / Recursos: Techista x2, Ayudante x2 / Costo MO: 2.040.000 / Materiales: 0 / Total: 2.040.000 / Predecesoras: 6.1 FS / Holgura total: 0 / Holgura libre: 0 / TAREA CRÍTICA
- 54: Cómputo: 90 m2 / Rendimiento: 50 m2/día por cuadrilla / Cuadrillas: 1 / Duración: 2 días hábiles / Recursos: Techista x1, Ayudante x1 / Costo MO: 680.000 / Materiales: 0 / Total: 680.000 / Predecesoras: 6.2 FS / Holgura total: 0 / Holgura libre: 0 / TAREA CRÍTICA
- 55: Cómputo: 95 m2 / Rendimiento: 15 m2/día por cuadrilla / Cuadrillas: 2 / Duración: 4 días hábiles / Recursos: Techista x2, Ayudante x2 / Costo MO: 2.720.000 / Materiales: 0 / Total: 2.720.000 / Predecesoras: 6.3 FS / Holgura total: 0 / Holgura libre: 0 / TAREA CRÍTICA
- 56: Recursos: Techista x1, Ayudante x1 / Costo MO: 680.000 / Materiales: 0 / Total: 680.000 / Predecesoras: 6.4 FS / Holgura total: 0 / Holgura libre: 0 / TAREA CRÍTICA
- 57: Cómputo: 40 ml / Rendimiento: 15 ml/día por cuadrilla / Cuadrillas: 1 / Duración: 3 días hábiles / Recursos: Herrero / aberturista x1, Ayudante x1 / Costo MO: 1.080.000 / Materiales: 0 / Total: 1.080.000 / Predecesoras: 6.4 SS+2 / Holgura total: 1 / Holgura libre: 0
- 58: Predecesoras: 6.5 FS, 6.6 FS / Holgura total: 0 / Holgura libre: 0 / TAREA CRÍTICA

| ID | WBS | Task | Duration | Start | Finish | Predecessors | Baseline start | Baseline finish | Baseline duration | Constraint | Resources | Cost | Costo MO | Costo total | Cómputo | Rendimiento | Cuadrilla | Holgura |
| --- | --- | --- | --- | --- | --- | --- | --- | --- | --- | --- | --- | --- | --- | --- | --- | --- | --- | --- |
| 59 | 1.7 | **7 Instalación sanitaria** | 131d | 2026-10-03 | 2027-03-17 |  | 2026-10-03 | 2027-03-17 | 131d |  |  |  | 10.420.000 | 10.420.000 |  |  |  |  |
| 60 | 1.7.1 | 7.1 Desagüe cloacal primario bajo piso y cámaras de inspección | 4d | 2026-10-30 | 2026-11-03 | 26 | 2026-10-30 | 2026-11-03 | 4d |  | Plomero sanitarista 1; Ayudante 2 | 1,440,000 | 1.440.000 | 1.440.000 | 45 ml | 12 ml/día x 1 | 1 PLOM + 1 AY | 67 |
| 61 | 1.7.2 | 7.2 Cámara séptica y pozo absorbente | 6d | 2026-10-03 | 2026-10-09 | 17 | 2026-10-03 | 2026-10-09 | 6d |  | Oficial albañil 2; Ayudante 5; Ayudante 6 | 2,760,000 | 2.760.000 | 2.760.000 |  |  | 1 OF + 2 AY | 124 |
| 62 | 1.7.3 | 7.3 Cañería embutida de agua fría/caliente y desagües PB | 4d | 2026-11-13 | 2026-11-17 | 44 | 2026-11-13 | 2026-11-17 | 4d |  | Plomero sanitarista 1; Ayudante 4 | 1,440,000 | 1.440.000 | 1.440.000 |  |  | 1 PLOM + 1 AY | 36 |
| 63 | 1.7.4 | 7.4 Cañería embutida de agua fría/caliente y desagües PA | 4d | 2026-12-17 | 2026-12-21 | 47, 62 | 2026-12-17 | 2026-12-21 | 4d |  | Plomero sanitarista 1; Ayudante 4 | 1,440,000 | 1.440.000 | 1.440.000 |  |  | 1 PLOM + 1 AY | 12 |
| 64 | 1.7.5 | 7.5 Prueba hidráulica de cañerías | 1d | 2026-12-22 | 2026-12-22 | 63 | 2026-12-22 | 2026-12-22 | 1d |  | Plomero sanitarista 1 | 230,000 | 230.000 | 230.000 |  |  | 1 PLOM | 12 |
| 65 | 1.7.6 | 7.6 Tanque elevado, montante y colector | 2d | 2027-01-08 | 2027-01-09 | 41FS+5d | 2027-01-08 | 2027-01-09 | 2d |  | Plomero sanitarista 1; Ayudante 4 | 720,000 | 720.000 | 720.000 |  |  | 1 PLOM + 1 AY | 55 |
| 66 | 1.7.7 | 7.7 Desagües pluviales a nivel de terreno | 2d | 2027-01-25 | 2027-01-26 | 57 | 2027-01-25 | 2027-01-26 | 2d |  | Plomero sanitarista 1; Ayudante 3 | 720,000 | 720.000 | 720.000 | 30 ml | 15 ml/día x 1 | 1 PLOM + 1 AY | 42 |
| 67 | 1.7.8 | 7.8 Colocación de artefactos sanitarios y griferías | 4d | 2027-03-12 | 2027-03-16 | 93, 113 | 2027-03-12 | 2027-03-16 | 4d |  | Plomero sanitarista 1; Ayudante 3 | 1,440,000 | 1.440.000 | 1.440.000 | 14 un | 4 un/día x 1 | 1 PLOM + 1 AY | 0 ● |
| 68 | 1.7.9 | 7.9 Prueba final y puesta en servicio sanitaria | 1d | 2027-03-17 | 2027-03-17 | 61, 64, 65, 67 | 2027-03-17 | 2027-03-17 | 1d |  | Plomero sanitarista 1 | 230,000 | 230.000 | 230.000 |  |  | 1 PLOM | 0 ● |
| 69 | 1.8 | **8 Instalación eléctrica** | 95d | 2026-11-13 | 2027-03-16 |  | 2026-11-13 | 2027-03-16 | 95d |  |  |  | 8.490.000 | 8.490.000 |  |  |  |  |
| 70 | 1.8.1 | 8.1 Cañería eléctrica en losa de entrepiso | 2d | 2026-11-19 | 2026-11-20 | 33SS+3d | 2026-11-19 | 2026-11-20 | 2d |  | Electricista 1; Ayudante 2 | 720,000 | 720.000 | 720.000 |  |  | 1 ELEC + 1 AY | 0 ● |
| 71 | 1.8.2 | 8.2 Cañerías y cajas embutidas en muros PB | 4d | 2026-11-13 | 2026-11-17 | 44 | 2026-11-13 | 2026-11-17 | 4d |  | Electricista 1; Ayudante 5 | 1,440,000 | 1.440.000 | 1.440.000 | 45 bocas | 12 bocas/día x 1 | 1 ELEC + 1 AY | 45 |
| 72 | 1.8.3 | 8.3 Cañerías y cajas embutidas en muros PA | 4d | 2026-12-17 | 2026-12-21 | 47, 71 | 2026-12-17 | 2026-12-21 | 4d |  | Electricista 1; Ayudante 5 | 1,440,000 | 1.440.000 | 1.440.000 | 40 bocas | 12 bocas/día x 1 | 1 ELEC + 1 AY | 21 |
| 73 | 1.8.4 | 8.4 Pilastra, medidor y acometida | 2d | 2026-11-13 | 2026-11-14 | 44 | 2026-11-13 | 2026-11-14 | 2d |  | Electricista 2; Oficial albañil 1 | 860,000 | 860.000 | 860.000 |  |  | 1 ELEC + 1 OF | 91 |
| 74 | 1.8.5 | 8.5 Instalaciones débiles (datos, TV, CCTV, portero) | 2d | 2026-12-22 | 2026-12-23 | 72 | 2026-12-22 | 2026-12-23 | 2d |  | Electricista 1 | 460,000 | 460.000 | 460.000 |  |  | 1 ELEC | 53 |
| 75 | 1.8.6 | 8.6 Cableado de circuitos | 5d | 2027-02-10 | 2027-02-15 | 72, 74, 81, 99 | 2027-02-10 | 2027-02-15 | 5d |  | Electricista 1; Ayudante 3 | 1,800,000 | 1.800.000 | 1.800.000 | 85 bocas | 20 bocas/día x 1 | 1 ELEC + 1 AY | 21 |
| 76 | 1.8.7 | 8.7 Tableros principal y seccionales | 2d | 2027-02-12 | 2027-02-13 | 73, 75SS+2d | 2027-02-12 | 2027-02-13 | 2d |  | Electricista 2 | 460,000 | 460.000 | 460.000 |  |  | 1 ELEC | 25 |
| 77 | 1.8.8 | 8.8 Llaves, tomas y artefactos de iluminación | 3d | 2027-03-12 | 2027-03-15 | 75, 113 | 2027-03-12 | 2027-03-15 | 3d |  | Electricista 1; Ayudante 4 | 1,080,000 | 1.080.000 | 1.080.000 | 85 un | 30 un/día x 1 | 1 ELEC + 1 AY | 1 |
| 78 | 1.8.9 | 8.9 Puesta a tierra, mediciones y pruebas | 1d | 2027-03-16 | 2027-03-16 | 76, 77 | 2027-03-16 | 2027-03-16 | 1d |  | Electricista 2 | 230,000 | 230.000 | 230.000 |  |  | 1 ELEC | 1 |
| 79 | 1.9 | **9 Revoques** | 42d | 2026-12-23 | 2027-02-19 |  | 2026-12-23 | 2027-02-19 | 42d |  |  |  | 31.350.000 | 31.350.000 |  |  |  |  |
| 80 | 1.9.1 | 9.1 Revoque interior PB (grueso y fino) | 10d | 2027-01-08 | 2027-01-19 | 40, 62, 71 | 2027-01-08 | 2027-01-19 | 10d | start no earlier than 2027-01-08 | Oficial albañil 1; Oficial albañil 2; Oficial albañil 3; Ayudante 5; Ayudante 6; Ayudante 7 | 9,900,000 | 9.900.000 | 9.900.000 | 380 m2 | 14 m2/día x 3 | 3 OF + 3 AY | 12 |
| 81 | 1.9.2 | 9.2 Revoque interior PA (grueso y fino) | 8d | 2027-01-26 | 2027-02-03 | 58, 63, 72 | 2027-01-26 | 2027-02-03 | 8d |  | Oficial albañil 1; Oficial albañil 2; Oficial albañil 3; Ayudante 2; Ayudante 4; Ayudante 5 | 7,920,000 | 7.920.000 | 7.920.000 | 330 m2 | 14 m2/día x 3 | 3 OF + 3 AY | 0 ● |
| 82 | 1.9.3 | 9.3 Revoque de cielorraso bajo losa (PB) | 4d | 2027-01-20 | 2027-01-23 | 40, 70 | 2027-01-20 | 2027-01-23 | 4d | start no earlier than 2027-01-20 | Oficial albañil 2; Oficial albañil 3; Ayudante 6; Ayudante 7 | 2,640,000 | 2.640.000 | 2.640.000 | 80 m2 | 10 m2/día x 2 | 2 OF + 2 AY | 23 |
| 83 | 1.9.4 | 9.4 Revoque exterior con andamios | 14d | 2027-02-04 | 2027-02-19 | 58 | 2027-02-04 | 2027-02-19 | 14d | start no earlier than 2027-02-04 | Oficial albañil 2; Oficial albañil 3; Ayudante 5; Ayudante 6 | 9,240,000 | 9.240.000 | 9.240.000 | 280 m2 | 10 m2/día x 2 | 2 OF + 2 AY | 10 |
| 84 | 1.9.5 | 9.5 Revoque impermeable en baños y cocina | 5d | 2026-12-23 | 2027-01-07 | 64 | 2026-12-23 | 2027-01-07 | 5d |  | Oficial albañil 1; Ayudante 4 | 1,650,000 | 1.650.000 | 1.650.000 | 60 m2 | 12 m2/día x 1 | 1 OF + 1 AY | 12 |

Notes:
- 60: Cómputo: 45 ml / Rendimiento: 12 ml/día por cuadrilla / Cuadrillas: 1 / Duración: 4 días hábiles / Recursos: Plomero sanitarista x1, Ayudante x1 / Costo MO: 1.440.000 / Materiales: 0 / Total: 1.440.000 / Predecesoras: 3.8 FS / Holgura total: 67 / Holgura libre: 0
- 61: Recursos: Oficial albañil x1, Ayudante x2 / Costo MO: 2.760.000 / Materiales: 0 / Total: 2.760.000 / Predecesoras: 2.5 FS / Holgura total: 124 / Holgura libre: 124
- 62: Recursos: Plomero sanitarista x1, Ayudante x1 / Costo MO: 1.440.000 / Materiales: 0 / Total: 1.440.000 / Predecesoras: 5.1 FS / Holgura total: 36 / Holgura libre: 24
- 63: Recursos: Plomero sanitarista x1, Ayudante x1 / Costo MO: 1.440.000 / Materiales: 0 / Total: 1.440.000 / Predecesoras: 5.4 FS, 7.3 FS / Holgura total: 12 / Holgura libre: 0
- 64: Recursos: Plomero sanitarista x1 / Costo MO: 230.000 / Materiales: 0 / Total: 230.000 / Predecesoras: 7.4 FS / Holgura total: 12 / Holgura libre: 0
- 65: Recursos: Plomero sanitarista x1, Ayudante x1 / Costo MO: 720.000 / Materiales: 0 / Total: 720.000 / Predecesoras: 4.12 FS+5 / Holgura total: 55 / Holgura libre: 55
- 66: Cómputo: 30 ml / Rendimiento: 15 ml/día por cuadrilla / Cuadrillas: 1 / Duración: 2 días hábiles / Recursos: Plomero sanitarista x1, Ayudante x1 / Costo MO: 720.000 / Materiales: 0 / Total: 720.000 / Predecesoras: 6.6 FS / Holgura total: 42 / Holgura libre: 32
- 67: Cómputo: 14 un / Rendimiento: 4 un/día por cuadrilla / Cuadrillas: 1 / Duración: 4 días hábiles / Recursos: Plomero sanitarista x1, Ayudante x1 / Costo MO: 1.440.000 / Materiales: 0 / Total: 1.440.000 / Predecesoras: 11.3 FS, 14.5 FS / Holgura total: 0 / Holgura libre: 0 / TAREA CRÍTICA
- 68: Recursos: Plomero sanitarista x1 / Costo MO: 230.000 / Materiales: 0 / Total: 230.000 / Predecesoras: 7.8 FS, 7.5 FS, 7.6 FS, 7.2 FS / Holgura total: 0 / Holgura libre: 0 / TAREA CRÍTICA
- 70: Recursos: Electricista x1, Ayudante x1 / Costo MO: 720.000 / Materiales: 0 / Total: 720.000 / Predecesoras: 4.4 SS+3 / Holgura total: 0 / Holgura libre: 0 / TAREA CRÍTICA
- 71: Cómputo: 45 bocas / Rendimiento: 12 bocas/día por cuadrilla / Cuadrillas: 1 / Duración: 4 días hábiles / Recursos: Electricista x1, Ayudante x1 / Costo MO: 1.440.000 / Materiales: 0 / Total: 1.440.000 / Predecesoras: 5.1 FS / Holgura total: 45 / Holgura libre: 24
- 72: Cómputo: 40 bocas / Rendimiento: 12 bocas/día por cuadrilla / Cuadrillas: 1 / Duración: 4 días hábiles / Recursos: Electricista x1, Ayudante x1 / Costo MO: 1.440.000 / Materiales: 0 / Total: 1.440.000 / Predecesoras: 5.4 FS, 8.2 FS / Holgura total: 21 / Holgura libre: 0
- 73: Recursos: Electricista x1, Oficial albañil x1 / Costo MO: 860.000 / Materiales: 0 / Total: 860.000 / Predecesoras: 5.1 FS / Holgura total: 91 / Holgura libre: 66
- 74: Recursos: Electricista x1 / Costo MO: 460.000 / Materiales: 0 / Total: 460.000 / Predecesoras: 8.3 FS / Holgura total: 53 / Holgura libre: 32
- 75: Cómputo: 85 bocas / Rendimiento: 20 bocas/día por cuadrilla / Cuadrillas: 1 / Duración: 5 días hábiles / Recursos: Electricista x1, Ayudante x1 / Costo MO: 1.800.000 / Materiales: 0 / Total: 1.800.000 / Predecesoras: 9.2 FS, 8.3 FS, 12.1 FS, 8.5 FS / Holgura total: 21 / Holgura libre: 0
- 76: Recursos: Electricista x1 / Costo MO: 460.000 / Materiales: 0 / Total: 460.000 / Predecesoras: 8.6 SS+2, 8.4 FS / Holgura total: 25 / Holgura libre: 24
- 77: Cómputo: 85 un / Rendimiento: 30 un/día por cuadrilla / Cuadrillas: 1 / Duración: 3 días hábiles / Recursos: Electricista x1, Ayudante x1 / Costo MO: 1.080.000 / Materiales: 0 / Total: 1.080.000 / Predecesoras: 14.5 FS, 8.6 FS / Holgura total: 1 / Holgura libre: 0
- 78: Recursos: Electricista x1 / Costo MO: 230.000 / Materiales: 0 / Total: 230.000 / Predecesoras: 8.7 FS, 8.8 FS / Holgura total: 1 / Holgura libre: 1
- 80: Cómputo: 380 m2 / Rendimiento: 14 m2/día por cuadrilla / Cuadrillas: 3 / Duración: 10 días hábiles / Recursos: Oficial albañil x3, Ayudante x3 / Costo MO: 9.900.000 / Materiales: 0 / Total: 9.900.000 / Predecesoras: 8.2 FS, 7.3 FS, 4.11 FS / Holgura total: 12 / Holgura libre: 0 / Retrasada por nivelación de recursos (9 días hábiles respecto del CPM sin límites).
- 81: Cómputo: 330 m2 / Rendimiento: 14 m2/día por cuadrilla / Cuadrillas: 3 / Duración: 8 días hábiles / Recursos: Oficial albañil x3, Ayudante x3 / Costo MO: 7.920.000 / Materiales: 0 / Total: 7.920.000 / Predecesoras: 8.3 FS, 7.4 FS, 6.7 FS / Holgura total: 0 / Holgura libre: 0 / TAREA CRÍTICA
- 82: Cómputo: 80 m2 / Rendimiento: 10 m2/día por cuadrilla / Cuadrillas: 2 / Duración: 4 días hábiles / Recursos: Oficial albañil x2, Ayudante x2 / Costo MO: 2.640.000 / Materiales: 0 / Total: 2.640.000 / Predecesoras: 4.11 FS, 8.1 FS / Holgura total: 23 / Holgura libre: 16 / Retrasada por nivelación de recursos (19 días hábiles respecto del CPM sin límites).
- 83: Cómputo: 280 m2 / Rendimiento: 10 m2/día por cuadrilla / Cuadrillas: 2 / Duración: 14 días hábiles / Recursos: Oficial albañil x2, Ayudante x2 / Costo MO: 9.240.000 / Materiales: 0 / Total: 9.240.000 / Predecesoras: 6.7 FS / Holgura total: 10 / Holgura libre: 0 / Retrasada por nivelación de recursos (8 días hábiles respecto del CPM sin límites).
- 84: Cómputo: 60 m2 / Rendimiento: 12 m2/día por cuadrilla / Cuadrillas: 1 / Duración: 5 días hábiles / Recursos: Oficial albañil x1, Ayudante x1 / Costo MO: 1.650.000 / Materiales: 0 / Total: 1.650.000 / Predecesoras: 7.5 FS / Holgura total: 12 / Holgura libre: 0

| ID | WBS | Task | Duration | Start | Finish | Predecessors | Baseline start | Baseline finish | Baseline duration | Resources | Cost | Costo MO | Costo total | Cómputo | Rendimiento | Cuadrilla | Holgura |
| --- | --- | --- | --- | --- | --- | --- | --- | --- | --- | --- | --- | --- | --- | --- | --- | --- | --- |
| 85 | 1.10 | **10 Contrapisos y carpetas** | 29d | 2027-01-20 | 2027-02-22 |  | 2027-01-20 | 2027-02-22 | 29d |  |  | 6.120.000 | 6.120.000 |  |  |  |  |
| 86 | 1.10.1 | 10.1 Contrapiso de cascotes PB | 4d | 2027-01-20 | 2027-01-23 | 27, 60, 80 | 2027-01-20 | 2027-01-23 | 4d | Oficial albañil 1; Ayudante 4; Ayudante 5 | 1,840,000 | 1.840.000 | 1.840.000 | 85 m2 | 25 m2/día x 1 | 1 OF + 2 AY | 12 |
| 87 | 1.10.2 | 10.2 Contrapiso sobre losa PA | 3d | 2027-02-04 | 2027-02-06 | 81 | 2027-02-04 | 2027-02-06 | 3d | Oficial albañil 1; Ayudante 2; Ayudante 3 | 1,380,000 | 1.380.000 | 1.380.000 | 75 m2 | 25 m2/día x 1 | 1 OF + 2 AY | 0 ● |
| 88 | 1.10.3 | 10.3 Carpeta de nivelación PB y PA | 6d | 2027-02-10 | 2027-02-16 | 86FS+2d, 87FS+2d | 2027-02-10 | 2027-02-16 | 6d | Oficial albañil 1; Ayudante 2 | 1,980,000 | 1.980.000 | 1.980.000 | 160 m2 | 30 m2/día x 1 | 1 OF + 1 AY | 0 ● |
| 89 | 1.10.4 | 10.4 Contrapiso exterior (galería y veredas) | 2d | 2027-02-20 | 2027-02-22 | 83 | 2027-02-20 | 2027-02-22 | 2d | Oficial albañil 1; Ayudante 2; Ayudante 3 | 920,000 | 920.000 | 920.000 | 45 m2 | 25 m2/día x 1 | 1 OF + 2 AY | 13 |
| 90 | 1.11 | **11 Pisos y revestimientos** | 14d | 2027-02-20 | 2027-03-09 |  | 2027-02-20 | 2027-03-09 | 14d |  |  | 11.930.000 | 11.930.000 |  |  |  |  |
| 91 | 1.11.1 | 11.1 Piso porcelanato PB | 4d | 2027-02-20 | 2027-02-24 | 88FS+3d | 2027-02-20 | 2027-02-24 | 4d | Colocador de pisos y revestimientos 1; Colocador de pisos y revestimientos 2; Ayudante 4; Ayudante 5 | 2,800,000 | 2.800.000 | 2.800.000 | 85 m2 | 12 m2/día x 2 | 2 COL + 2 AY | 0 ● |
| 92 | 1.11.2 | 11.2 Piso porcelanato PA | 4d | 2027-02-25 | 2027-03-02 | 91 | 2027-02-25 | 2027-03-02 | 4d | Colocador de pisos y revestimientos 1; Colocador de pisos y revestimientos 2; Ayudante 2; Ayudante 3 | 2,800,000 | 2.800.000 | 2.800.000 | 75 m2 | 12 m2/día x 2 | 2 COL + 2 AY | 0 ● |
| 93 | 1.11.3 | 11.3 Revestimiento cerámico de baños y cocina | 5d | 2027-03-03 | 2027-03-08 | 84, 92 | 2027-03-03 | 2027-03-08 | 5d | Colocador de pisos y revestimientos 1; Colocador de pisos y revestimientos 2; Ayudante 2 | 2,850,000 | 2.850.000 | 2.850.000 | 70 m2 | 8 m2/día x 2 | 2 COL + 1 AY | 2 |
| 94 | 1.11.4 | 11.4 Revestimiento de escalera | 2d | 2027-02-25 | 2027-02-26 | 91 | 2027-02-25 | 2027-02-26 | 2d | Colocador de pisos y revestimientos 3; Ayudante 4 | 700,000 | 700.000 | 700.000 |  |  | 1 COL + 1 AY | 9 |
| 95 | 1.11.5 | 11.5 Zócalos | 4d | 2027-03-03 | 2027-03-06 | 92 | 2027-03-03 | 2027-03-06 | 4d | Colocador de pisos y revestimientos 3; Ayudante 3 | 1,400,000 | 1.400.000 | 1.400.000 | 160 ml | 40 ml/día x 1 | 1 COL + 1 AY | 0 ● |
| 96 | 1.11.6 | 11.6 Pisos exteriores (galería y vereda perimetral) | 3d | 2027-02-26 | 2027-03-02 | 89FS+3d | 2027-02-26 | 2027-03-02 | 3d | Colocador de pisos y revestimientos 4; Ayudante 6 | 1,050,000 | 1.050.000 | 1.050.000 | 45 m2 | 15 m2/día x 1 | 1 COL + 1 AY | 13 |
| 97 | 1.11.7 | 11.7 Mesada de cocina y lavadero | 1d | 2027-03-09 | 2027-03-09 | 93 | 2027-03-09 | 2027-03-09 | 1d | Oficial albañil 1; Ayudante 2 | 330,000 | 330.000 | 330.000 |  |  | 1 OF + 1 AY | 2 |
| 98 | 1.12 | **12 Cielorrasos** | 7d | 2027-02-04 | 2027-02-11 |  | 2027-02-04 | 2027-02-11 | 7d |  |  | 2.120.000 | 2.120.000 |  |  |  |  |
| 99 | 1.12.1 | 12.1 Cielorraso suspendido de placas de yeso PA | 5d | 2027-02-04 | 2027-02-09 | 54, 72, 81 | 2027-02-04 | 2027-02-09 | 5d | Yesero / cielorrasista 1; Ayudante 4 | 1,700,000 | 1.700.000 | 1.700.000 | 75 m2 | 15 m2/día x 1 | 1 YES + 1 AY | 7 |
| 100 | 1.12.2 | 12.2 Masillado y encintado de juntas | 2d | 2027-02-10 | 2027-02-11 | 99 | 2027-02-10 | 2027-02-11 | 2d | Yesero / cielorrasista 1 | 420,000 | 420.000 | 420.000 | 75 m2 | 40 m2/día x 1 | 1 YES | 7 |
| 101 | 1.13 | **13 Carpintería, herrería y vidrios** | 19d | 2027-02-20 | 2027-03-15 |  | 2027-02-20 | 2027-03-15 | 19d |  |  | 6.450.000 | 6.450.000 |  |  |  |  |
| 102 | 1.13.1 | 13.1 Ventanas y puertas exteriores (aluminio) | 3d | 2027-02-20 | 2027-02-23 | 81, 83 | 2027-02-20 | 2027-02-23 | 3d | Herrero / aberturista 1; Ayudante 6 | 1,080,000 | 1.080.000 | 1.080.000 | 14 un | 5 un/día x 1 | 1 HERR + 1 AY | 14 |
| 103 | 1.13.2 | 13.2 Vidrios | 3d | 2027-02-24 | 2027-02-26 | 102 | 2027-02-24 | 2027-02-26 | 3d | Herrero / aberturista 1 | 690,000 | 690.000 | 690.000 | 30 m2 | 12 m2/día x 1 | 1 HERR | 15 |
| 104 | 1.13.3 | 13.3 Hojas de puertas interiores y herrajes | 3d | 2027-03-03 | 2027-03-05 | 92, 110 | 2027-03-03 | 2027-03-05 | 3d | Carpintero ebanista 1; Ayudante 5 | 1,080,000 | 1.080.000 | 1.080.000 | 10 un | 4 un/día x 1 | 1 EBAN + 1 AY | 1 |
| 105 | 1.13.4 | 13.4 Baranda de escalera y rejas | 3d | 2027-02-27 | 2027-03-03 | 94 | 2027-02-27 | 2027-03-03 | 3d | Herrero / aberturista 1; Ayudante 4 | 1,080,000 | 1.080.000 | 1.080.000 |  |  | 1 HERR + 1 AY | 9 |
| 106 | 1.13.5 | 13.5 Placares y muebles de cocina | 5d | 2027-03-10 | 2027-03-15 | 97, 110 | 2027-03-10 | 2027-03-15 | 5d | Carpintero ebanista 1; Ayudante 2 | 1,800,000 | 1.800.000 | 1.800.000 |  |  | 1 EBAN + 1 AY | 2 |
| 107 | 1.13.6 | 13.6 Portón vehicular | 2d | 2027-02-25 | 2027-02-26 | 116 | 2027-02-25 | 2027-02-26 | 2d | Herrero / aberturista 2; Ayudante 5 | 720,000 | 720.000 | 720.000 |  |  | 1 HERR + 1 AY | 17 |
| 108 | 1.14 | **14 Pintura** | 23d | 2027-02-12 | 2027-03-11 |  | 2027-02-12 | 2027-03-11 | 23d |  |  | 9.500.000 | 9.500.000 |  |  |  |  |
| 109 | 1.14.1 | 14.1 Enduido y lijado interior (muros y cielorrasos) | 5d | 2027-02-12 | 2027-02-17 | 80, 81, 82, 100 | 2027-02-12 | 2027-02-17 | 5d | Pintor 1; Pintor 2; Pintor 3 | 2,850,000 | 2.850.000 | 2.850.000 | 865 m2 | 60 m2/día x 3 | 3 PINT | 7 |
| 110 | 1.14.2 | 14.2 Pintura interior: fondo y primera mano | 4d | 2027-02-18 | 2027-02-22 | 109 | 2027-02-18 | 2027-02-22 | 4d | Pintor 1; Pintor 2; Pintor 3 | 2,280,000 | 2.280.000 | 2.280.000 | 865 m2 | 80 m2/día x 3 | 3 PINT | 7 |
| 111 | 1.14.3 | 14.3 Pintura exterior (fijador + 2 manos) | 4d | 2027-03-02 | 2027-03-05 | 83FS+7d, 102 | 2027-03-02 | 2027-03-05 | 4d | Pintor 1; Pintor 2 | 1,520,000 | 1.520.000 | 1.520.000 | 560 m2 | 70 m2/día x 2 | 2 PINT | 10 |
| 112 | 1.14.4 | 14.4 Pintura de aberturas, herrería y maderas | 3d | 2027-03-06 | 2027-03-09 | 104, 105 | 2027-03-06 | 2027-03-09 | 3d | Pintor 1 | 570,000 | 570.000 | 570.000 |  |  | 1 PINT | 7 |
| 113 | 1.14.5 | 14.5 Pintura interior: mano final | 4d | 2027-03-08 | 2027-03-11 | 95, 104, 110 | 2027-03-08 | 2027-03-11 | 4d | Pintor 2; Pintor 3; Pintor 4 | 2,280,000 | 2.280.000 | 2.280.000 | 865 m2 | 80 m2/día x 3 | 3 PINT | 0 ● |

Notes:
- 86: Cómputo: 85 m2 / Rendimiento: 25 m2/día por cuadrilla / Cuadrillas: 1 / Duración: 4 días hábiles / Recursos: Oficial albañil x1, Ayudante x2 / Costo MO: 1.840.000 / Materiales: 0 / Total: 1.840.000 / Predecesoras: 3.9 FS, 7.1 FS, 9.1 FS / Holgura total: 12 / Holgura libre: 12
- 87: Cómputo: 75 m2 / Rendimiento: 25 m2/día por cuadrilla / Cuadrillas: 1 / Duración: 3 días hábiles / Recursos: Oficial albañil x1, Ayudante x2 / Costo MO: 1.380.000 / Materiales: 0 / Total: 1.380.000 / Predecesoras: 9.2 FS / Holgura total: 0 / Holgura libre: 0 / TAREA CRÍTICA
- 88: Cómputo: 160 m2 / Rendimiento: 30 m2/día por cuadrilla / Cuadrillas: 1 / Duración: 6 días hábiles / Recursos: Oficial albañil x1, Ayudante x1 / Costo MO: 1.980.000 / Materiales: 0 / Total: 1.980.000 / Predecesoras: 10.1 FS+2, 10.2 FS+2 / Holgura total: 0 / Holgura libre: 0 / TAREA CRÍTICA
- 89: Cómputo: 45 m2 / Rendimiento: 25 m2/día por cuadrilla / Cuadrillas: 1 / Duración: 2 días hábiles / Recursos: Oficial albañil x1, Ayudante x2 / Costo MO: 920.000 / Materiales: 0 / Total: 920.000 / Predecesoras: 9.4 FS / Holgura total: 13 / Holgura libre: 0
- 91: Cómputo: 85 m2 / Rendimiento: 12 m2/día por cuadrilla / Cuadrillas: 2 / Duración: 4 días hábiles / Recursos: Colocador de pisos y revestimientos x2, Ayudante x2 / Costo MO: 2.800.000 / Materiales: 0 / Total: 2.800.000 / Predecesoras: 10.3 FS+3 / Holgura total: 0 / Holgura libre: 0 / TAREA CRÍTICA
- 92: Cómputo: 75 m2 / Rendimiento: 12 m2/día por cuadrilla / Cuadrillas: 2 / Duración: 4 días hábiles / Recursos: Colocador de pisos y revestimientos x2, Ayudante x2 / Costo MO: 2.800.000 / Materiales: 0 / Total: 2.800.000 / Predecesoras: 11.1 FS / Holgura total: 0 / Holgura libre: 0 / TAREA CRÍTICA
- 93: Cómputo: 70 m2 / Rendimiento: 8 m2/día por cuadrilla / Cuadrillas: 2 / Duración: 5 días hábiles / Recursos: Colocador de pisos y revestimientos x2, Ayudante x1 / Costo MO: 2.850.000 / Materiales: 0 / Total: 2.850.000 / Predecesoras: 9.5 FS, 11.2 FS / Holgura total: 2 / Holgura libre: 0
- 94: Recursos: Colocador de pisos y revestimientos x1, Ayudante x1 / Costo MO: 700.000 / Materiales: 0 / Total: 700.000 / Predecesoras: 11.1 FS / Holgura total: 9 / Holgura libre: 0
- 95: Cómputo: 160 ml / Rendimiento: 40 ml/día por cuadrilla / Cuadrillas: 1 / Duración: 4 días hábiles / Recursos: Colocador de pisos y revestimientos x1, Ayudante x1 / Costo MO: 1.400.000 / Materiales: 0 / Total: 1.400.000 / Predecesoras: 11.2 FS / Holgura total: 0 / Holgura libre: 0 / TAREA CRÍTICA
- 96: Cómputo: 45 m2 / Rendimiento: 15 m2/día por cuadrilla / Cuadrillas: 1 / Duración: 3 días hábiles / Recursos: Colocador de pisos y revestimientos x1, Ayudante x1 / Costo MO: 1.050.000 / Materiales: 0 / Total: 1.050.000 / Predecesoras: 10.4 FS+3 / Holgura total: 13 / Holgura libre: 3
- 97: Recursos: Oficial albañil x1, Ayudante x1 / Costo MO: 330.000 / Materiales: 0 / Total: 330.000 / Predecesoras: 11.3 FS / Holgura total: 2 / Holgura libre: 0
- 99: Cómputo: 75 m2 / Rendimiento: 15 m2/día por cuadrilla / Cuadrillas: 1 / Duración: 5 días hábiles / Recursos: Yesero / cielorrasista x1, Ayudante x1 / Costo MO: 1.700.000 / Materiales: 0 / Total: 1.700.000 / Predecesoras: 6.3 FS, 8.3 FS, 9.2 FS / Holgura total: 7 / Holgura libre: 0
- 100: Cómputo: 75 m2 / Rendimiento: 40 m2/día por cuadrilla / Cuadrillas: 1 / Duración: 2 días hábiles / Recursos: Yesero / cielorrasista x1 / Costo MO: 420.000 / Materiales: 0 / Total: 420.000 / Predecesoras: 12.1 FS / Holgura total: 7 / Holgura libre: 0
- 102: Cómputo: 14 un / Rendimiento: 5 un/día por cuadrilla / Cuadrillas: 1 / Duración: 3 días hábiles / Recursos: Herrero / aberturista x1, Ayudante x1 / Costo MO: 1.080.000 / Materiales: 0 / Total: 1.080.000 / Predecesoras: 9.4 FS, 9.2 FS / Holgura total: 14 / Holgura libre: 0
- 103: Cómputo: 30 m2 / Rendimiento: 12 m2/día por cuadrilla / Cuadrillas: 1 / Duración: 3 días hábiles / Recursos: Herrero / aberturista x1 / Costo MO: 690.000 / Materiales: 0 / Total: 690.000 / Predecesoras: 13.1 FS / Holgura total: 15 / Holgura libre: 15
- 104: Cómputo: 10 un / Rendimiento: 4 un/día por cuadrilla / Cuadrillas: 1 / Duración: 3 días hábiles / Recursos: Carpintero ebanista x1, Ayudante x1 / Costo MO: 1.080.000 / Materiales: 0 / Total: 1.080.000 / Predecesoras: 11.2 FS, 14.2 FS / Holgura total: 1 / Holgura libre: 0
- 105: Recursos: Herrero / aberturista x1, Ayudante x1 / Costo MO: 1.080.000 / Materiales: 0 / Total: 1.080.000 / Predecesoras: 11.4 FS / Holgura total: 9 / Holgura libre: 2
- 106: Recursos: Carpintero ebanista x1, Ayudante x1 / Costo MO: 1.800.000 / Materiales: 0 / Total: 1.800.000 / Predecesoras: 11.7 FS, 14.2 FS / Holgura total: 2 / Holgura libre: 2
- 107: Recursos: Herrero / aberturista x1, Ayudante x1 / Costo MO: 720.000 / Materiales: 0 / Total: 720.000 / Predecesoras: 15.2 FS / Holgura total: 17 / Holgura libre: 17
- 109: Cómputo: 865 m2 / Rendimiento: 60 m2/día por cuadrilla / Cuadrillas: 3 / Duración: 5 días hábiles / Recursos: Pintor x3 / Costo MO: 2.850.000 / Materiales: 0 / Total: 2.850.000 / Predecesoras: 9.1 FS, 9.2 FS, 9.3 FS, 12.2 FS / Holgura total: 7 / Holgura libre: 0
- 110: Cómputo: 865 m2 / Rendimiento: 80 m2/día por cuadrilla / Cuadrillas: 3 / Duración: 4 días hábiles / Recursos: Pintor x3 / Costo MO: 2.280.000 / Materiales: 0 / Total: 2.280.000 / Predecesoras: 14.1 FS / Holgura total: 7 / Holgura libre: 6
- 111: Cómputo: 560 m2 / Rendimiento: 70 m2/día por cuadrilla / Cuadrillas: 2 / Duración: 4 días hábiles / Recursos: Pintor x2 / Costo MO: 1.520.000 / Materiales: 0 / Total: 1.520.000 / Predecesoras: 9.4 FS+7, 13.1 FS / Holgura total: 10 / Holgura libre: 0
- 112: Recursos: Pintor x1 / Costo MO: 570.000 / Materiales: 0 / Total: 570.000 / Predecesoras: 13.3 FS, 13.4 FS / Holgura total: 7 / Holgura libre: 7
- 113: Cómputo: 865 m2 / Rendimiento: 80 m2/día por cuadrilla / Cuadrillas: 3 / Duración: 4 días hábiles / Recursos: Pintor x3 / Costo MO: 2.280.000 / Materiales: 0 / Total: 2.280.000 / Predecesoras: 14.2 FS, 13.3 FS, 11.5 FS / Holgura total: 0 / Holgura libre: 0 / TAREA CRÍTICA

| ID | WBS | Task | Type | Duration | Start | Finish | Predecessors | Baseline start | Baseline finish | Baseline duration | Constraint | Resources | Cost | Costo MO | Costo total | Cómputo | Rendimiento | Cuadrilla | Holgura |
| --- | --- | --- | --- | --- | --- | --- | --- | --- | --- | --- | --- | --- | --- | --- | --- | --- | --- | --- | --- |
| 114 | 1.15 | **15 Obras exteriores** |  | 87d | 2026-11-23 | 2027-03-16 |  | 2026-11-23 | 2027-03-16 | 87d |  |  |  | 4.310.000 | 4.310.000 |  |  |  |  |
| 115 | 1.15.1 | 15.1 Muro perimetral definitivo |  | 4d | 2026-11-23 | 2026-11-26 | 28 | 2026-11-23 | 2026-11-26 | 4d | start no earlier than 2026-11-23 | Oficial albañil 1; Oficial albañil 2; Ayudante 2; Ayudante 3 | 2,640,000 | 2.640.000 | 2.640.000 | 70 m2 | 9 m2/día x 2 | 2 OF + 2 AY | 82 |
| 116 | 1.15.2 | 15.2 Entrada vehicular y caminero |  | 2d | 2027-02-23 | 2027-02-24 | 89, 115 | 2027-02-23 | 2027-02-24 | 2d |  | Oficial albañil 1; Ayudante 2; Ayudante 3 | 920,000 | 920.000 | 920.000 | 30 m2 | 15 m2/día x 1 | 1 OF + 2 AY | 17 |
| 117 | 1.15.3 | 15.3 Iluminación exterior |  | 1d | 2027-03-16 | 2027-03-16 | 77, 111 | 2027-03-16 | 2027-03-16 | 1d |  | Electricista 1 | 230,000 | 230.000 | 230.000 |  |  | 1 ELEC | 3 |
| 118 | 1.15.4 | 15.4 Parquizado y empastado |  | 2d | 2027-03-06 | 2027-03-08 | 66, 96, 111, 116 | 2027-03-06 | 2027-03-08 | 2d |  | Ayudante 4; Ayudante 5 | 520,000 | 520.000 | 520.000 | 120 m2 | 60 m2/día x 1 | 2 AY | 10 |
| 119 | 1.16 | **16 Pruebas, limpieza y entrega** |  | 8d | 2027-03-18 | 2027-03-29 |  | 2027-03-18 | 2027-03-29 | 8d |  |  |  | 8.840.000 | 8.840.000 |  |  |  |  |
| 120 | 1.16.1 | 16.1 Limpieza gruesa y retiro de escombros |  | 2d | 2027-03-18 | 2027-03-19 | 68, 78, 103, 106, 112, 113 | 2027-03-18 | 2027-03-19 | 2d |  | Ayudante 2; Ayudante 3; Ayudante 4; Camión volcador (con chofer) 1 | 2,180,000 | 2.180.000 | 2.180.000 |  |  | 3 AY + 1 CAM | 0 ● |
| 121 | 1.16.2 | 16.2 Inspección final y lista de observaciones |  | 1d | 2027-03-20 | 2027-03-20 | 107, 117, 118, 120 | 2027-03-20 | 2027-03-20 | 1d |  | Director de obra (Arq./Ing.) 2 | 600,000 | 600.000 | 600.000 |  |  | 1 DIR | 0 ● |
| 122 | 1.16.3 | 16.3 Corrección de observaciones |  | 3d | 2027-03-22 | 2027-03-24 | 121 | 2027-03-22 | 2027-03-24 | 3d |  | Oficial albañil 1; Ayudante 2; Pintor 1 | 1,560,000 | 1.560.000 | 1.560.000 |  |  | 1 OF + 1 AY + 1 PINT | 0 ● |
| 123 | 1.16.4 | 16.4 Limpieza final fina |  | 2d | 2027-03-27 | 2027-03-29 | 122 | 2027-03-27 | 2027-03-29 | 2d |  | Ayudante 2; Ayudante 3; Ayudante 4 | 780,000 | 780.000 | 780.000 |  |  | 3 AY | 0 ● |
| 124 | 1.16.5 | 16.5 Planos conforme a obra y manual de uso |  | 3d | 2027-03-22 | 2027-03-24 | 121 | 2027-03-22 | 2027-03-24 | 3d |  | Director de obra (Arq./Ing.) 2 | 1,800,000 | 1.800.000 | 1.800.000 |  |  | 1 DIR | 2 |
| 125 | 1.16.6 | 16.6 Desmontaje de obrador |  | 2d | 2027-03-27 | 2027-03-29 | 122 | 2027-03-27 | 2027-03-29 | 2d |  | Ayudante 5; Ayudante 6; Camión volcador (con chofer) 1 | 1,920,000 | 1.920.000 | 1.920.000 |  |  | 2 AY + 1 CAM | 0 ● |
| 126 | 1.16.7 | 16.7 Recepción provisoria / entrega de obra | milestone | 0d | 2027-03-30 | 2027-03-30 | 123, 124, 125 | 2027-03-30 | 2027-03-30 | 0d |  |  |  |  |  |  |  |  | 0 ● |
| 127 | 1.17 | **17 Dirección y servicios de obra (permanentes)** |  | 151d | 2026-09-18 | 2027-03-29 |  | 2026-09-18 | 2027-03-29 | 151d |  |  |  | 91.355.000 | 91.355.000 |  |  |  |  |
| 128 | 1.17.1 | 17.1 Conducción y supervisión de obra |  | 151d | 2026-09-18 | 2027-03-29 |  | 2026-09-18 | 2027-03-29 | 151d |  | Encargado de obra 1 | 45,300,000 | 45.300.000 | 45.300.000 |  |  | 1 ENC | 0 |
| 129 | 1.17.2 | 17.2 Dirección técnica (visitas, libro de obra) |  | 151d | 2026-09-18 | 2027-03-29 |  | 2026-09-18 | 2027-03-29 | 151d |  | Director de obra (Arq./Ing.) 1 [20%] | 18,120,000 | 18.120.000 | 18.120.000 |  |  | 0.2 DIR | 0 |
| 130 | 1.17.3 | 17.3 Vigilancia nocturna |  | 151d | 2026-09-18 | 2027-03-29 |  | 2026-09-18 | 2027-03-29 | 151d |  | Sereno 1 | 18,120,000 | 18.120.000 | 18.120.000 |  |  | 1 SER | 0 |
| 131 | 1.17.4 | 17.4 Limpieza periódica y seguridad e higiene |  | 151d | 2026-09-18 | 2027-03-29 |  | 2026-09-18 | 2027-03-29 | 151d |  | Ayudante 1 [50%] | 9,815,000 | 9.815.000 | 9.815.000 |  |  | 0.5 AY | 0 |

Notes:
- 115: Cómputo: 70 m2 / Rendimiento: 9 m2/día por cuadrilla / Cuadrillas: 2 / Duración: 4 días hábiles / Recursos: Oficial albañil x2, Ayudante x2 / Costo MO: 2.640.000 / Materiales: 0 / Total: 2.640.000 / Predecesoras: 3.10 FS / Holgura total: 82 / Holgura libre: 65 / Retrasada por nivelación de recursos (20 días hábiles respecto del CPM sin límites).
- 116: Cómputo: 30 m2 / Rendimiento: 15 m2/día por cuadrilla / Cuadrillas: 1 / Duración: 2 días hábiles / Recursos: Oficial albañil x1, Ayudante x2 / Costo MO: 920.000 / Materiales: 0 / Total: 920.000 / Predecesoras: 10.4 FS, 15.1 FS / Holgura total: 17 / Holgura libre: 0
- 117: Recursos: Electricista x1 / Costo MO: 230.000 / Materiales: 0 / Total: 230.000 / Predecesoras: 8.8 FS, 14.3 FS / Holgura total: 3 / Holgura libre: 3
- 118: Cómputo: 120 m2 / Rendimiento: 60 m2/día por cuadrilla / Cuadrillas: 1 / Duración: 2 días hábiles / Recursos: Ayudante x2 / Costo MO: 520.000 / Materiales: 0 / Total: 520.000 / Predecesoras: 15.2 FS, 14.3 FS, 11.6 FS, 7.7 FS / Holgura total: 10 / Holgura libre: 10
- 120: Recursos: Ayudante x3, Camión volcador (con chofer) x1 / Costo MO: 2.180.000 / Materiales: 0 / Total: 2.180.000 / Predecesoras: 14.5 FS, 14.4 FS, 7.9 FS, 8.9 FS, 13.5 FS, 13.2 FS / Holgura total: 0 / Holgura libre: 0 / TAREA CRÍTICA
- 121: Recursos: Director de obra (Arq./Ing.) x1 / Costo MO: 600.000 / Materiales: 0 / Total: 600.000 / Predecesoras: 16.1 FS, 15.3 FS, 15.4 FS, 13.6 FS / Holgura total: 0 / Holgura libre: 0 / TAREA CRÍTICA
- 122: Recursos: Oficial albañil x1, Ayudante x1, Pintor x1 / Costo MO: 1.560.000 / Materiales: 0 / Total: 1.560.000 / Predecesoras: 16.2 FS / Holgura total: 0 / Holgura libre: 0 / TAREA CRÍTICA
- 123: Recursos: Ayudante x3 / Costo MO: 780.000 / Materiales: 0 / Total: 780.000 / Predecesoras: 16.3 FS / Holgura total: 0 / Holgura libre: 0 / TAREA CRÍTICA
- 124: Recursos: Director de obra (Arq./Ing.) x1 / Costo MO: 1.800.000 / Materiales: 0 / Total: 1.800.000 / Predecesoras: 16.2 FS / Holgura total: 2 / Holgura libre: 2
- 125: Recursos: Ayudante x2, Camión volcador (con chofer) x1 / Costo MO: 1.920.000 / Materiales: 0 / Total: 1.920.000 / Predecesoras: 16.3 FS / Holgura total: 0 / Holgura libre: 0 / TAREA CRÍTICA
- 126: Predecesoras: 16.4 FS, 16.5 FS, 16.6 FS / Holgura total: 0 / Holgura libre: 0 / TAREA CRÍTICA
- 128: Recursos: Encargado de obra x1 / Costo MO: 45.300.000 / Materiales: 0 / Total: 45.300.000 / Tarea permanente: abarca toda la duración de la obra.
- 129: Recursos: Director de obra (Arq./Ing.) x0.2 / Costo MO: 18.120.000 / Materiales: 0 / Total: 18.120.000 / Tarea permanente: abarca toda la duración de la obra.
- 130: Recursos: Sereno x1 / Costo MO: 18.120.000 / Materiales: 0 / Total: 18.120.000 / Tarea permanente: abarca toda la duración de la obra.
- 131: Recursos: Ayudante x0.5 / Costo MO: 9.815.000 / Materiales: 0 / Total: 9.815.000 / Tarea permanente: abarca toda la duración de la obra.
